# 盖聚宝平台项目进度计划表

Schedule from MS Project, 2016-04-22 to 2016-05-30, 12 hours a day, A marks actual dates.

## Calendars

- 平台孵化: Mon-Sun 09:00-12:00, 13:30-22:30. Exceptions (off unless hours are given): 2016-04-25 to 2016-05-31 (两周一休, recurring).

## Resources

| Resource | Group |
| --- | --- |
| 马海洋 | 前端 |
| 黄冲 | 前端 |
| 张军 | 后台 |
| 洪涛 | 后台 |
| 郭正 | 后台 |

## Schedule

| ID | WBS | Task | Type | Duration | Start | Finish | Predecessors | Complete | Remaining | Total slack | Free slack | Constraint | Resources | Work | Actual work |
| --- | --- | --- | --- | --- | --- | --- | --- | --- | --- | --- | --- | --- | --- | --- | --- |
| 1 | 1 | **盖聚宝平台一期** |  | 36.96d? | 2016-04-22 09:00 A | 2016-05-30 22:00 |  | 20% | 29.53d? | 0d |  |  |  | 788.4h | 180.9h |
| 2 | 1.1 | **需求调研** |  | 6.96d | 2016-04-22 09:00 A | 2016-04-28 22:00 |  | 71% | 2d | 0.04d |  |  |  |  |  |
| 3 | 1.1.1 | 需求设计 |  | 4.96d | 2016-04-22 09:00 A | 2016-04-26 22:00 A |  | 100% |  |  |  | finish no later than 2016-04-27 22:00 |  |  |  |
| 4 | 1.1.2 | 需求确认 |  | 2d | 2016-04-26 22:00 | 2016-04-28 22:00 | 3 |  |  | 0.04d |  | start no later than 2016-04-27 09:00 |  |  |  |
| 5 | 1.2 | 设计 |  | 11d | 2016-04-22 09:00 | 2016-05-02 22:30 |  |  |  | 0d |  | start no later than 2016-04-22 09:00 |  |  |  |
| 6 | 1.3 | **开发** |  | 19.85d? | 2016-05-03 09:00 A | 2016-05-24 20:42 | 5 | 23% | 15.3d? | 6.11d |  |  |  | 788.4h | 180.9h |
| 7 | 1.3.1 | **盖聚宝互联网系统** |  | 15d? | 2016-05-03 09:00 A | 2016-05-18 22:30 |  | 40% | 8.99d? | 10.96d |  |  |  | 451.2h | 180.9h |
| 8 | 1.3.1.1 | **全站公共页头** |  | 1d? | 2016-05-03 09:00 A | 2016-05-03 22:30 |  | 50% | 0.5d? | 24.96d |  |  |  | 24h | 12h |
| 9 | 1.3.1.1.1 | 前端页面 |  | 1d? | 2016-05-03 09:00 A | 2016-05-03 22:30 A |  | 100% |  |  |  |  | 黄冲 | 12h | 12h |
| 10 | 1.3.1.1.2 | 后台接口 |  | 1d? | 2016-05-03 09:00 | 2016-05-03 22:30 |  |  |  | 24.96d |  |  | 郭正 | 12h |  |
| 11 | 1.3.1.2 | **登录页面** |  | 1d? | 2016-05-04 09:00 A | 2016-05-04 22:30 A |  | 100% |  |  |  |  |  | 18h | 18h |
| 12 | 1.3.1.2.1 | 前端页面 |  | 1d? | 2016-05-04 09:00 A | 2016-05-04 22:30 A | 9 | 100% |  |  |  |  | 黄冲 | 12h | 12h |
| 13 | 1.3.1.2.2 | 后台接口 |  | 0.5d | 2016-05-04 09:00 A | 2016-05-04 16:30 A | 10 | 100% |  |  |  |  | 郭正 | 6h | 6h |
| 14 | 1.3.1.3 | **注册页面** |  | 2d | 2016-05-03 09:00 A | 2016-05-04 22:30 A |  | 100% |  |  |  |  |  | 18h | 18h |
| 15 | 1.3.1.3.1 | 前端页面 |  | 1d | 2016-05-03 09:00 A | 2016-05-03 22:30 A |  | 100% |  |  |  |  | 黄冲 | 12h | 12h |
| 16 | 1.3.1.3.2 | 后台接口 |  | 0.5d | 2016-05-04 16:30 A | 2016-05-04 22:30 A | 13 | 100% |  |  |  |  | 郭正 | 6h | 6h |
| 17 | 1.3.1.4 | **搜索结果页** |  | 0.5d | 2016-05-05 09:00 | 2016-05-05 16:30 |  |  |  | 21.96d |  |  |  | 9.6h |  |
| 18 | 1.3.1.4.1 | 前端页面 |  | 0.5d | 2016-05-05 09:00 | 2016-05-05 16:30 | 12 |  |  | 21.96d | 0d |  | 黄冲 | 6h |  |
| 19 | 1.3.1.4.2 | 后台接口 |  | 0.3d | 2016-05-05 09:00 | 2016-05-05 14:06 | 16 |  |  | 22.96d | 0d |  | 郭正 | 3.6h |  |
| 20 | 1.3.1.5 | **首页页面** |  | 1.7d | 2016-05-05 14:06 | 2016-05-06 22:30 |  |  |  | 21.96d |  |  |  | 26.4h |  |
| 21 | 1.3.1.5.1 | 前端页面 |  | 1.5d | 2016-05-05 16:30 | 2016-05-06 22:30 | 18 |  |  | 21.96d |  |  | 黄冲 | 18h |  |
| 22 | 1.3.1.5.2 | 后台接口 |  | 0.7d | 2016-05-05 14:06 | 2016-05-05 22:30 | 19 |  |  | 22.96d | 0d |  | 郭正 | 8.4h |  |
| 23 | 1.3.1.6 | **全站公共页脚** |  | 0.3d | 2016-05-07 09:00 A | 2016-05-07 14:06 A |  | 100% |  |  |  |  |  | 3.6h | 3.6h |
| 24 | 1.3.1.6.1 | 前端页面 |  | 0.3d | 2016-05-07 09:00 A | 2016-05-07 14:06 A | 21 | 100% |  |  |  |  | 黄冲 | 3.6h | 3.6h |
| 25 | 1.3.1.7 | 侧栏工具栏 | inactive | 0.5d | 2016-05-03 09:00 | 2016-05-03 16:30 |  |  |  | 25.46d |  |  |  |  |  |

| ID | WBS | Task | Type | Duration | Start | Finish | Predecessors | Complete | Remaining | Total slack | Free slack | Resources | Work | Actual work |
| --- | --- | --- | --- | --- | --- | --- | --- | --- | --- | --- | --- | --- | --- | --- |
| 26 | 1.3.1.8 | **我要参与** | inactive | 4.5d | 2016-05-03 09:00 | 2016-05-07 16:30 |  |  |  | 17.91d |  |  | 72h |  |
| 27 | 1.3.1.8.1 | **沙盘展示页** | inactive | 2d | 2016-05-03 09:00 | 2016-05-04 22:30 |  |  |  | 17.91d |  |  | 30h |  |
| 28 | 1.3.1.8.1.1 | 前端页面 | inactive | 2d | 2016-05-03 09:00 | 2016-05-04 22:30 |  |  |  | 18.96d | 0d | 马海洋 | 24h |  |
| 29 | 1.3.1.8.1.2 | 后台接口 | inactive | 0.5d | 2016-05-03 09:00 | 2016-05-03 16:30 |  |  |  | 17.91d | 0d | 洪涛 | 6h |  |
| 30 | 1.3.1.8.2 | **楼展示页** | inactive | 2.5d | 2016-05-03 16:30 | 2016-05-05 22:30 |  |  |  | 17.91d |  |  | 18h |  |
| 31 | 1.3.1.8.2.1 | 前端页面 | inactive | 1d | 2016-05-05 09:00 | 2016-05-05 22:30 | 28 |  |  | 18.96d | 0d | 马海洋 | 12h |  |
| 32 | 1.3.1.8.2.2 | 后台接口 | inactive | 0.5d | 2016-05-03 16:30 | 2016-05-03 22:30 | 29 |  |  | 17.91d | 0d | 洪涛 | 6h |  |
| 33 | 1.3.1.8.3 | **房源信息展示页** | inactive | 3.5d | 2016-05-04 09:00 | 2016-05-07 16:30 |  |  |  | 17.91d |  |  | 24h |  |
| 34 | 1.3.1.8.3.1 | 前端页面 | inactive | 1.5d | 2016-05-06 09:00 | 2016-05-07 16:30 | 31 |  |  | 18.96d | 0d | 马海洋 | 18h |  |
| 35 | 1.3.1.8.3.2 | 后台接口 | inactive | 0.5d | 2016-05-04 09:00 | 2016-05-04 16:30 | 32 |  |  | 17.91d | 0d | 洪涛 | 6h |  |
| 36 | 1.3.1.9 | **棋子湾动态** |  | 1d | 2016-05-03 09:00 | 2016-05-03 22:30 |  |  |  | 20.46d |  |  | 18h |  |
| 37 | 1.3.1.9.1 | 前端页面 |  | 1d | 2016-05-03 09:00 | 2016-05-03 22:30 | 34 |  |  | 20.46d | 0d | 马海洋 | 12h |  |
| 38 | 1.3.1.9.2 | 后台接口 |  | 0.5d | 2016-05-03 09:00 | 2016-05-03 16:30 |  |  |  | 20.46d | 0d | 张军 | 6h |  |
| 39 | 1.3.1.10 | **转让房源** |  | 2.5d? | 2016-05-03 09:00 | 2016-05-05 16:30 |  |  |  | 19.41d |  |  | 27.6h |  |
| 40 | 1.3.1.10.1 | **转让房源详情页** |  | 1.5d | 2016-05-03 09:00 | 2016-05-04 16:30 |  |  |  | 19.41d |  |  | 9.6h |  |
| 41 | 1.3.1.10.1.1 | 前端页面 |  | 0.5d | 2016-05-04 09:00 | 2016-05-04 16:30 | 37 |  |  | 20.46d | 0d | 马海洋 | 6h |  |
| 42 | 1.3.1.10.1.2 | 后台接口 |  | 0.3d | 2016-05-03 09:00 | 2016-05-03 14:06 | 35 |  |  | 19.41d | 0d | 洪涛 | 3.6h |  |
| 43 | 1.3.1.10.2 | **转让房源列表页** |  | 2.2d? | 2016-05-03 14:06 | 2016-05-05 16:30 |  |  |  | 19.41d |  |  | 18h |  |
| 44 | 1.3.1.10.2.1 | 前端页面 |  | 1d? | 2016-05-04 16:30 | 2016-05-05 16:30 | 41 |  |  | 20.46d | 0d | 马海洋 | 12h |  |
| 45 | 1.3.1.10.2.2 | 后台接口 |  | 0.5d? | 2016-05-03 14:06 | 2016-05-03 20:06 | 42 |  |  | 19.41d | 0d | 洪涛 | 6h |  |
| 46 | 1.3.1.11 | **支付** |  | 4.5d | 2016-05-03 16:30 A | 2016-05-07 22:30 |  | 31% | 3.12d | 20.46d |  |  | 78h | 24h |
| 47 | 1.3.1.11.1 | **订单确认页** |  | 3d | 2016-05-03 16:30 A | 2016-05-06 16:30 |  | 67% | 1d | 17.96d |  |  | 18h | 12h |
| 48 | 1.3.1.11.1.1 | 前端页面 |  | 1d | 2016-05-05 16:30 A | 2016-05-06 16:30 A | 44 | 100% |  |  |  | 马海洋 | 12h | 12h |
| 49 | 1.3.1.11.1.2 | 后台接口 |  | 0.5d | 2016-05-03 16:30 | 2016-05-03 22:30 | 38 |  |  | 20.46d | 0d | 张军 | 6h |  |

| ID | WBS | Task | Type | Duration | Start | Finish | Predecessors | Complete | Remaining | Total slack | Free slack | Constraint | Resources | Work | Actual work |
| --- | --- | --- | --- | --- | --- | --- | --- | --- | --- | --- | --- | --- | --- | --- | --- |
| 50 | 1.3.1.11.2 | **支付页面** |  | 4d | 2016-05-04 09:00 A | 2016-05-07 22:30 |  | 20% | 3.2d | 20.46d |  |  |  | 60h | 12h |
| 51 | 1.3.1.11.2.1 | 前端页面 |  | 1d | 2016-05-06 16:30 A | 2016-05-07 16:30 A | 48 | 100% |  |  |  |  | 马海洋 | 12h | 12h |
| 52 | 1.3.1.11.2.2 | 后台接口 |  | 4d | 2016-05-04 09:00 | 2016-05-07 22:30 | 49 |  |  | 20.46d | 0d |  | 张军 | 48h |  |
| 53 | 1.3.1.12 | **参与指引** | inactive | 1d | 2016-05-07 14:06 | 2016-05-09 14:06 |  |  |  | 18.66d |  |  |  | 12h |  |
| 54 | 1.3.1.12.1 | 前端页面 | inactive | 1d | 2016-05-07 14:06 | 2016-05-09 14:06 | 24 |  |  | 18.66d | 0d |  | 黄冲 | 12h |  |
| 55 | 1.3.1.13 | **关于我们** | inactive | 1d | 2016-05-09 14:06 | 2016-05-10 14:06 |  |  |  | 18.66d |  |  |  | 12h |  |
| 56 | 1.3.1.13.1 | 前端页面 | inactive | 1d | 2016-05-09 14:06 | 2016-05-10 14:06 | 54 |  |  | 18.66d | 0d |  | 黄冲 | 12h |  |
| 57 | 1.3.1.14 | **房价公示** |  | 4d | 2016-05-09 09:00 | 2016-05-12 22:30 |  |  |  | 16.96d |  |  |  | 18h |  |
| 58 | 1.3.1.14.1 | 前端页面 |  | 1d | 2016-05-12 09:00 | 2016-05-12 22:30 | 51 |  |  | 16.96d |  | start no earlier than 2016-05-12 09:00 | 马海洋 | 12h |  |
| 59 | 1.3.1.14.2 | 后台接口 |  | 0.5d | 2016-05-09 09:00 | 2016-05-09 16:30 | 52 |  |  | 20.46d |  | start no earlier than 2016-05-09 09:00 | 张军 | 6h |  |
| 60 | 1.3.1.15 | **个人中心** |  | 14.2d | 2016-05-03 20:06 A | 2016-05-18 22:30 |  | 50% | 7.08d | 10.96d |  |  |  | 210h | 105.3h |
| 61 | 1.3.1.15.1 | **账户管理** |  | 7d | 2016-05-09 16:30 A | 2016-05-16 16:30 |  | 67% | 2.33d | 13.46d |  |  |  | 45h | 30h |
| 62 | 1.3.1.15.1.1 | **我的收支明细** |  | 5d | 2016-05-09 16:30 A | 2016-05-14 16:30 A |  | 100% |  |  |  |  |  | 9h | 9h |
| 63 | 1.3.1.15.1.1.1 | 前端页面 |  | 0.5d | 2016-05-14 09:00 A | 2016-05-14 16:30 A | 58 | 100% |  |  |  |  | 马海洋 | 6h | 6h |
| 64 | 1.3.1.15.1.1.2 | 后台接口 |  | 0.25d | 2016-05-09 16:30 A | 2016-05-09 19:30 A | 59 | 100% |  |  |  |  | 张军 | 3h | 3h |
| 65 | 1.3.1.15.1.2 | **我的订单** |  | 5.25d | 2016-05-09 19:30 A | 2016-05-14 22:30 A |  | 100% |  |  |  |  |  | 9h | 9h |
| 66 | 1.3.1.15.1.2.1 | 前端页面 |  | 0.5d | 2016-05-14 16:30 A | 2016-05-14 22:30 A | 63 | 100% |  |  |  |  | 马海洋 | 6h | 6h |
| 67 | 1.3.1.15.1.2.2 | 后台接口 |  | 0.25d | 2016-05-09 19:30 A | 2016-05-09 22:30 A | 64 | 100% |  |  |  |  | 张军 | 3h | 3h |
| 68 | 1.3.1.15.1.3 | **提现** |  | 5.5d | 2016-05-10 09:00 A | 2016-05-15 16:30 |  | 33% | 3.67d | 14.46d |  |  |  | 9h | 3h |
| 69 | 1.3.1.15.1.3.1 | 前端页面 |  | 0.5d | 2016-05-15 09:00 | 2016-05-15 16:30 | 66 |  |  | 14.46d |  |  | 马海洋 | 6h |  |
| 70 | 1.3.1.15.1.3.2 | 后台接口 |  | 0.25d | 2016-05-10 09:00 A | 2016-05-10 12:00 A | 67 | 100% |  |  |  |  | 张军 | 3h | 3h |
| 71 | 1.3.1.15.1.4 | **充值** |  | 5.75d | 2016-05-10 13:30 A | 2016-05-15 22:30 A |  | 100% |  |  |  |  |  | 9h | 9h |
| 72 | 1.3.1.15.1.4.1 | 前端页面 |  | 0.5d | 2016-05-15 16:30 A | 2016-05-15 22:30 A | 69 | 100% |  |  |  |  | 马海洋 | 6h | 6h |
| 73 | 1.3.1.15.1.4.2 | 后台接口 |  | 0.25d | 2016-05-10 13:30 A | 2016-05-10 16:30 A | 70 | 100% |  |  |  |  | 张军 | 3h | 3h |

| ID | WBS | Task | Type | Duration | Start | Finish | Predecessors | Complete | Remaining | Total slack | Free slack | Resources | Work | Actual work |
| --- | --- | --- | --- | --- | --- | --- | --- | --- | --- | --- | --- | --- | --- | --- |
| 74 | 1.3.1.15.1.5 | **我的积分明细** |  | 6d | 2016-05-10 16:30 | 2016-05-16 16:30 |  |  |  | 6.11d |  |  | 9h |  |
| 75 | 1.3.1.15.1.5.1 | 前端页面 |  | 0.5d | 2016-05-16 09:00 | 2016-05-16 16:30 | 72 |  |  | 13.46d | 0d | 马海洋 | 6h |  |
| 76 | 1.3.1.15.1.5.2 | 后台接口 |  | 0.25d | 2016-05-10 16:30 | 2016-05-10 19:30 | 73 |  |  | 6.11d | 0d | 张军 | 3h |  |
| 77 | 1.3.1.15.1.6 | **我的推广邀请奖励** | inactive | 6.25d | 2016-05-10 19:30 | 2016-05-16 22:30 |  |  |  | 5.86d |  |  | 9h |  |
| 78 | 1.3.1.15.1.6.1 | 前端页面 | inactive | 0.5d | 2016-05-16 16:30 | 2016-05-16 22:30 | 75 |  |  | 12.96d |  | 马海洋 | 6h |  |
| 79 | 1.3.1.15.1.6.2 | 后台接口 | inactive | 0.25d | 2016-05-10 19:30 | 2016-05-10 22:30 | 76 |  |  | 5.86d | 0d | 张军 | 3h |  |
| 80 | 1.3.1.15.2 | **个人设置** |  | 14.2d | 2016-05-03 20:06 A | 2016-05-18 22:30 |  | 48% | 7.35d | 10.96d |  |  | 156h | 75.3h |
| 81 | 1.3.1.15.2.1 | **我的收货地址** | inactive | 3.8d | 2016-05-06 09:00 | 2016-05-10 20:06 |  |  |  | 19.16d |  |  | 9h |  |
| 82 | 1.3.1.15.2.1.1 | 前端页面 | inactive | 0.5d | 2016-05-10 14:06 | 2016-05-10 20:06 | 56 |  |  | 18.66d | 0d | 黄冲 | 6h |  |
| 83 | 1.3.1.15.2.1.2 | 后台接口 | inactive | 0.25d | 2016-05-06 09:00 | 2016-05-06 12:00 | 22 |  |  | 22.71d |  | 郭正 | 3h |  |
| 84 | 1.3.1.15.2.2 | **个人资料** |  | 1.55d | 2016-05-06 13:30 A | 2016-05-07 20:06 |  | 33% | 1.03d | 21.16d |  |  | 9h | 3h |
| 85 | 1.3.1.15.2.2.1 | 前端页面 |  | 0.5d | 2016-05-07 14:06 | 2016-05-07 20:06 | 82 |  |  | 21.16d |  | 黄冲 | 6h |  |
| 86 | 1.3.1.15.2.2.2 | 后台接口 |  | 0.25d | 2016-05-06 13:30 A | 2016-05-06 16:30 A | 83 | 100% |  |  |  | 郭正 | 3h | 3h |
| 87 | 1.3.1.15.2.3 | **安全信息** |  | 6.8d | 2016-05-06 16:30 A | 2016-05-14 14:06 |  | 93% | 0.45d | 0d |  |  | 54h | 50.4h |
| 88 | 1.3.1.15.2.3.1 | **修改登录密码** |  | 4.3d | 2016-05-06 16:30 A | 2016-05-11 20:06 |  | 93% | 0.29d | 0d |  |  | 9h | 8.4h |
| 89 | 1.3.1.15.2.3.1.1 | 前端页面 |  | 0.5d | 2016-05-11 14:06 A | 2016-05-11 20:06 A | 85 | 100% |  |  |  | 黄冲 | 6h | 6h |
| 90 | 1.3.1.15.2.3.1.2 | 后台接口 |  | 0.25d | 2016-05-06 16:30 A | 2016-05-06 19:30 | 86 | 80% | 0.05d | 0.2d | 0d | 郭正 | 3h | 2.4h |
| 91 | 1.3.1.15.2.3.2 | **绑定邮箱** |  | 4.55d | 2016-05-06 19:30 A | 2016-05-12 14:06 |  | 93% | 0.3d | 0d |  |  | 9h | 8.4h |
| 92 | 1.3.1.15.2.3.2.1 | 前端页面 |  | 0.5d | 2016-05-11 20:06 A | 2016-05-12 14:06 A | 89 | 100% |  |  |  | 黄冲 | 6h | 6h |
| 93 | 1.3.1.15.2.3.2.2 | 后台接口 |  | 0.25d | 2016-05-06 19:30 A | 2016-05-06 22:30 | 90 | 80% | 0.05d | 0.2d | 0d | 郭正 | 3h | 2.4h |
| 94 | 1.3.1.15.2.3.3 | **绑定手机** |  | 4.8d | 2016-05-07 09:00 A | 2016-05-12 20:06 |  | 93% | 0.32d | 0d |  |  | 9h | 8.4h |
| 95 | 1.3.1.15.2.3.3.1 | 前端页面 |  | 0.5d | 2016-05-12 14:06 A | 2016-05-12 20:06 A | 92 | 100% |  |  |  | 黄冲 | 6h | 6h |
| 96 | 1.3.1.15.2.3.3.2 | 后台接口 |  | 0.25d | 2016-05-07 09:00 A | 2016-05-07 12:00 | 93 | 80% | 0.05d | 0.2d | 0d | 郭正 | 3h | 2.4h |
| 97 | 1.3.1.15.2.3.4 | **设置支付密码** |  | 5.05d | 2016-05-07 13:30 A | 2016-05-13 14:06 |  | 93% | 0.34d | 0d |  |  | 9h | 8.4h |
| 98 | 1.3.1.15.2.3.4.1 | 前端页面 |  | 0.5d | 2016-05-12 20:06 A | 2016-05-13 14:06 A | 95 | 100% |  |  |  | 黄冲 | 6h | 6h |
| 99 | 1.3.1.15.2.3.4.2 | 后台接口 |  | 0.25d | 2016-05-07 13:30 A | 2016-05-07 16:30 | 96 | 80% | 0.05d | 0.2d | 0d | 郭正 | 3h | 2.4h |

| ID | WBS | Task | Duration | Start | Finish | Predecessors | Complete | Remaining | Total slack | Free slack | Resources | Work | Actual work |
| --- | --- | --- | --- | --- | --- | --- | --- | --- | --- | --- | --- | --- | --- |
| 100 | 1.3.1.15.2.3.5 | **实名认证** | 5.3d | 2016-05-07 16:30 A | 2016-05-13 20:06 |  | 93% | 0.35d | 0d |  |  | 9h | 8.4h |
| 101 | 1.3.1.15.2.3.5.1 | 前端页面 | 0.5d | 2016-05-13 14:06 A | 2016-05-13 20:06 A | 98 | 100% |  |  |  | 黄冲 | 6h | 6h |
| 102 | 1.3.1.15.2.3.5.2 | 后台接口 | 0.25d | 2016-05-07 16:30 A | 2016-05-07 19:30 | 99 | 80% | 0.05d | 0.2d | 0d | 郭正 | 3h | 2.4h |
| 103 | 1.3.1.15.2.3.6 | **银行卡绑定** | 5.55d | 2016-05-07 19:30 A | 2016-05-14 14:06 |  | 93% | 0.37d | 0d |  |  | 9h | 8.4h |
| 104 | 1.3.1.15.2.3.6.1 | 前端页面 | 0.5d | 2016-05-13 20:06 A | 2016-05-14 14:06 A | 101 | 100% |  |  |  | 黄冲 | 6h | 6h |
| 105 | 1.3.1.15.2.3.6.2 | 后台接口 | 0.25d | 2016-05-07 19:30 A | 2016-05-07 22:30 | 102 | 80% | 0.05d | 8.71d | 0d | 郭正 | 3h | 2.4h |
| 106 | 1.3.1.15.2.4 | **第三方平台账号绑定** | 6.3d | 2016-05-09 09:00 | 2016-05-15 14:06 |  |  |  | 0.07d |  |  | 18h |  |
| 107 | 1.3.1.15.2.4.1 | 前端页面 | 1d | 2016-05-14 14:06 | 2016-05-15 14:06 | 104 |  |  | 12.16d | 0d | 黄冲 | 12h |  |
| 108 | 1.3.1.15.2.4.2 | 后台接口 | 0.5d | 2016-05-09 09:00 | 2016-05-09 16:30 | 105 |  |  | 8.71d | 0d | 郭正 | 6h |  |
| 109 | 1.3.1.15.2.5 | **项目管理** | 14.2d | 2016-05-03 20:06 A | 2016-05-18 22:30 |  | 55% | 6.45d | 10.96d |  |  | 33h | 18h |
| 110 | 1.3.1.15.2.5.1 | **我支持的项目** | 13.7d | 2016-05-03 20:06 A | 2016-05-18 16:30 |  | 50% | 6.85d | 11.46d |  |  | 24h | 12h |
| 111 | 1.3.1.15.2.5.1.1 | 前端页面 | 1d | 2016-05-17 09:00 A | 2016-05-17 22:30 A | 78 | 100% |  |  |  | 马海洋 | 12h | 12h |
| 112 | 1.3.1.15.2.5.1.2 | **转让** | 13.7d | 2016-05-03 20:06 | 2016-05-18 16:30 |  |  |  | 11.46d |  |  | 9h |  |
| 113 | 1.3.1.15.2.5.1.2.1 | **转让申请页** | 13.7d | 2016-05-03 20:06 | 2016-05-18 16:30 |  |  |  | 11.46d |  |  | 9h |  |
| 114 | 1.3.1.15.2.5.1.2.1.1 | 前端页面 | 0.5d | 2016-05-18 09:00 | 2016-05-18 16:30 | 111 |  |  | 11.46d |  | 马海洋 | 6h |  |
| 115 | 1.3.1.15.2.5.1.2.1.2 | 后台接口 | 0.25d | 2016-05-03 20:06 | 2016-05-04 09:36 | 45 |  |  | 19.41d | 0d | 洪涛 | 3h |  |
| 116 | 1.3.1.15.2.5.1.3 | 回购申请后台接口 | 0.25d | 2016-05-04 09:36 | 2016-05-04 14:06 | 115 |  |  | 19.41d | 0d | 洪涛 | 3h |  |
| 117 | 1.3.1.15.2.5.2 | **我关注的项目** | 13.7d | 2016-05-04 14:06 A | 2016-05-18 22:30 |  | 67% | 4.57d | 5.96d |  |  | 9h | 6h |
| 118 | 1.3.1.15.2.5.2.1 | 前端页面 | 0.5d | 2016-05-18 16:30 A | 2016-05-18 22:30 A | 114 | 100% |  |  |  | 马海洋 | 6h | 6h |
| 119 | 1.3.1.15.2.5.2.2 | 后台接口 | 0.25d | 2016-05-04 14:06 | 2016-05-04 17:06 | 116 |  |  | 19.41d | 0d | 洪涛 | 3h |  |
| 120 | 1.3.1.15.2.6 | **我的消息** | 7.8d | 2016-05-09 16:30 A | 2016-05-17 14:06 |  | 9% | 7.08d | 12.66d |  |  | 42h | 3.9h |
| 121 | 1.3.1.15.2.6.1 | **项目评论** | 6.3d | 2016-05-09 16:30 A | 2016-05-15 20:06 |  | 10% | 5.67d | 13.16d |  |  | 9h | 0.9h |
| 122 | 1.3.1.15.2.6.1.1 | 前端页面 | 0.5d | 2016-05-15 14:06 | 2016-05-15 20:06 | 107 |  |  | 12.16d | 0d | 黄冲 | 6h |  |
| 123 | 1.3.1.15.2.6.1.2 | 后台接口 | 0.25d | 2016-05-09 16:30 A | 2016-05-09 19:30 | 108 | 30% | 0.17d | 19.21d | 0d | 郭正 | 3h | 0.9h |

| ID | WBS | Task | Type | Duration | Start | Finish | Predecessors | Complete | Remaining | Total slack | Free slack | Resources | Work | Actual work |
| --- | --- | --- | --- | --- | --- | --- | --- | --- | --- | --- | --- | --- | --- | --- |
| 124 | 1.3.1.15.2.6.2 | **项目动态** |  | 7.05d | 2016-05-09 19:30 | 2016-05-16 20:06 |  |  |  | 13.16d |  |  | 24h |  |
| 125 | 1.3.1.15.2.6.2.1 | 前端页面 |  | 1d | 2016-05-15 20:06 | 2016-05-16 20:06 | 122 |  |  | 12.16d | 0d | 黄冲 | 12h |  |
| 126 | 1.3.1.15.2.6.2.2 | 后台接口 |  | 1d | 2016-05-09 19:30 | 2016-05-10 19:30 | 123 |  |  | 8.71d | 0d | 郭正 | 12h |  |
| 127 | 1.3.1.15.2.6.3 | **我的私信** |  | 6.55d | 2016-05-10 19:30 A | 2016-05-17 14:06 |  | 33% | 4.37d | 12.16d |  |  | 9h | 3h |
| 128 | 1.3.1.15.2.6.3.1 | 前端页面 |  | 0.5d | 2016-05-16 20:06 | 2016-05-17 14:06 | 125 |  |  | 12.16d | 0d | 黄冲 | 6h |  |
| 129 | 1.3.1.15.2.6.3.2 | 后台接口 |  | 0.25d | 2016-05-10 19:30 A | 2016-05-10 22:30 A | 126 | 100% |  |  |  | 郭正 | 3h | 3h |
| 130 | 1.3.1.15.2.6.4 | **话题讨论** | inactive | 1d | 2016-05-03 09:00 | 2016-05-03 22:30 |  |  |  | 24.96d |  |  |  |  |
| 131 | 1.3.1.15.2.6.4.1 | 前端页面 | inactive | 1d | 2016-05-03 09:00 | 2016-05-03 22:30 |  |  |  | 24.96d |  |  |  |  |
| 132 | 1.3.1.15.2.6.4.2 | 后台接口 | inactive | 1d | 2016-05-03 09:00 | 2016-05-03 22:30 |  |  |  | 24.96d |  |  |  |  |
| 133 | 1.3.1.15.3 | **我的邀请** |  | 6.8d | 2016-05-11 09:00 | 2016-05-17 20:06 |  |  |  | 8.71d |  |  | 9h |  |
| 134 | 1.3.1.15.3.1 | **我的邀请推广记录** |  | 6.8d | 2016-05-11 09:00 | 2016-05-17 20:06 |  |  |  | 8.71d |  |  | 9h |  |
| 135 | 1.3.1.15.3.1.1 | 前端页面 |  | 0.5d | 2016-05-17 14:06 | 2016-05-17 20:06 | 128 |  |  | 12.16d |  | 黄冲 | 6h |  |
| 136 | 1.3.1.15.3.1.2 | 后台接口 |  | 0.25d | 2016-05-11 09:00 | 2016-05-11 12:00 | 129 |  |  | 8.71d | 0d | 郭正 | 3h |  |
| 137 | 1.3.2 | **后台管理系统** |  | 18.3d? | 2016-05-04 17:06 | 2016-05-24 20:42 |  |  |  | 6.11d |  |  | 337.2h |  |
| 138 | 1.3.2.1 | **首页** |  | 2.1d | 2016-05-10 19:30 | 2016-05-12 20:42 |  |  |  | 6.11d |  |  | 25.2h |  |
| 139 | 1.3.2.1.1 | 推广奖励明细 |  | 0.3d | 2016-05-10 19:30 | 2016-05-11 09:36 | 79 |  |  | 6.11d | 0d | 张军 | 3.6h |  |
| 140 | 1.3.2.1.2 | 个人信息 |  | 0.3d | 2016-05-11 09:36 | 2016-05-11 14:42 | 139 |  |  | 6.11d | 0d | 张军 | 3.6h |  |
| 141 | 1.3.2.1.3 | 代办事项 |  | 0.3d | 2016-05-11 14:42 | 2016-05-11 18:18 | 140 |  |  | 6.11d | 0d | 张军 | 3.6h |  |
| 142 | 1.3.2.1.4 | 操作日志 |  | 0.3d | 2016-05-11 18:18 | 2016-05-11 21:54 | 141 |  |  | 6.11d | 0d | 张军 | 3.6h |  |
| 143 | 1.3.2.1.5 | 平台用户统计 |  | 0.3d | 2016-05-11 21:54 | 2016-05-12 12:00 | 142 |  |  | 6.11d | 0d | 张军 | 3.6h |  |
| 144 | 1.3.2.1.6 | 平台项目统计 |  | 0.3d | 2016-05-12 13:30 | 2016-05-12 17:06 | 143 |  |  | 6.11d | 0d | 张军 | 3.6h |  |
| 145 | 1.3.2.1.7 | 财务统计 |  | 0.3d | 2016-05-12 17:06 | 2016-05-12 20:42 | 144 |  |  | 6.11d | 0d | 张军 | 3.6h |  |
| 146 | 1.3.2.2 | **系统管理** |  | 9d? | 2016-05-11 13:30 | 2016-05-20 12:00 |  |  |  | 7.71d |  |  | 168h |  |
| 147 | 1.3.2.2.1 | **用户管理** |  | 5.6d? | 2016-05-11 13:30 | 2016-05-16 20:42 |  |  |  | 7.71d |  |  | 108h |  |
| 148 | 1.3.2.2.1.1 | 后台用户管理 |  | 1d? | 2016-05-12 20:42 | 2016-05-13 20:42 | 145 |  |  | 6.11d | 0d | 张军 | 12h |  |
| 149 | 1.3.2.2.1.2 | 平台用户管理 |  | 1d? | 2016-05-13 20:42 | 2016-05-14 20:42 | 148 |  |  | 6.11d | 0d | 张军 | 12h |  |
| 150 | 1.3.2.2.1.3 | 角色管理 |  | 1d? | 2016-05-11 13:30 | 2016-05-12 12:00 | 136 |  |  | 8.71d | 0d | 郭正 | 12h |  |
| 151 | 1.3.2.2.1.4 | 功能管理 |  | 1d? | 2016-05-12 13:30 | 2016-05-13 12:00 | 150 |  |  | 8.71d | 0d | 郭正 | 12h |  |
| 152 | 1.3.2.2.1.5 | 日志管理 |  | 1d? | 2016-05-13 13:30 | 2016-05-14 12:00 | 151 |  |  | 8.71d | 0d | 郭正 | 12h |  |
| 153 | 1.3.2.2.1.6 | 字典管理 |  | 1d? | 2016-05-14 20:42 | 2016-05-15 20:42 | 149 |  |  | 6.11d | 0d | 张军 | 12h |  |
| 154 | 1.3.2.2.1.7 | 参数管理 |  | 1d? | 2016-05-15 20:42 | 2016-05-16 20:42 | 153 |  |  | 6.11d | 0d | 张军 | 12h |  |
| 155 | 1.3.2.2.1.8 | 部门机构管理 |  | 1d? | 2016-05-14 13:30 | 2016-05-15 12:00 | 152 |  |  | 8.71d | 0d | 郭正 | 12h |  |
| 156 | 1.3.2.2.1.9 | 岗位管理 |  | 1d? | 2016-05-15 13:30 | 2016-05-16 12:00 | 155 |  |  | 8.71d | 0d | 郭正 | 12h |  |

| ID | WBS | Task | Type | Duration | Start | Finish | Predecessors | Total slack | Free slack | Resources | Work |
| --- | --- | --- | --- | --- | --- | --- | --- | --- | --- | --- | --- |
| 157 | 1.3.2.2.2 | **SEO管理设置** | inactive | 1d? | 2016-05-03 09:00 | 2016-05-03 22:30 |  | 24.96d |  |  |  |
| 158 | 1.3.2.2.2.1 | SEO设置 | inactive | 1d? | 2016-05-03 09:00 | 2016-05-03 22:30 |  | 24.96d |  |  |  |
| 159 | 1.3.2.2.2.2 | 百度站长工具配置 | inactive | 1d? | 2016-05-03 09:00 | 2016-05-03 22:30 |  | 24.96d |  |  |  |
| 160 | 1.3.2.2.2.3 | CNZZ站长工具配置 | inactive | 1d? | 2016-05-03 09:00 | 2016-05-03 22:30 |  | 24.96d |  |  |  |
| 161 | 1.3.2.2.2.4 | 百度站长流量统计分析 | inactive | 1d? | 2016-05-03 09:00 | 2016-05-03 22:30 |  | 24.96d |  |  |  |
| 162 | 1.3.2.2.2.5 | CNZZ站长流量统计分析 | inactive | 1d? | 2016-05-03 09:00 | 2016-05-03 22:30 |  | 24.96d |  |  |  |
| 163 | 1.3.2.2.3 | **系统通知模板管理** |  | 1.5d? | 2016-05-16 13:30 | 2016-05-17 19:30 |  | 8.71d |  |  | 18h |
| 164 | 1.3.2.2.3.1 | 邮件通知配置管理 |  | 0.5d? | 2016-05-16 13:30 | 2016-05-16 19:30 | 156 | 8.71d | 0d | 郭正 | 6h |
| 165 | 1.3.2.2.3.2 | 手机短信通知配置管理 |  | 0.5d? | 2016-05-16 19:30 | 2016-05-17 12:00 | 164 | 8.71d | 0d | 郭正 | 6h |
| 166 | 1.3.2.2.3.3 | 站内信通知配置管理 |  | 0.5d? | 2016-05-17 13:30 | 2016-05-17 19:30 | 165 | 8.71d | 0d | 郭正 | 6h |
| 167 | 1.3.2.2.4 | **信息推送** |  | 1.5d? | 2016-05-17 19:30 | 2016-05-19 12:00 |  | 8.71d |  |  | 18h |
| 168 | 1.3.2.2.4.1 | 推送站内信 |  | 0.5d? | 2016-05-17 19:30 | 2016-05-18 12:00 | 166 | 8.71d | 0d | 郭正 | 6h |
| 169 | 1.3.2.2.4.2 | 推送手机短信 |  | 0.5d? | 2016-05-18 13:30 | 2016-05-18 19:30 | 168 | 8.71d | 0d | 郭正 | 6h |
| 170 | 1.3.2.2.4.3 | 推送邮件消息 |  | 0.5d? | 2016-05-18 19:30 | 2016-05-19 12:00 | 169 | 8.71d | 0d | 郭正 | 6h |
| 171 | 1.3.2.2.5 | **评论管理** |  | 1d? | 2016-05-19 13:30 | 2016-05-20 12:00 |  | 8.71d |  |  | 12h |
| 172 | 1.3.2.2.5.1 | 评论管理 |  | 1d? | 2016-05-19 13:30 | 2016-05-20 12:00 | 170 | 8.71d | 0d | 郭正 | 12h |
| 173 | 1.3.2.2.6 | **报表管理** |  | 1d? | 2016-05-16 20:42 | 2016-05-17 20:42 |  | 6.11d |  |  | 12h |
| 174 | 1.3.2.2.6.1 | 会员购房统计查询 |  | 1d? | 2016-05-16 20:42 | 2016-05-17 20:42 | 154 | 6.11d | 0d | 张军 | 12h |
| 175 | 1.3.2.3 | **地产管理** |  | 14.3d? | 2016-05-04 17:06 | 2016-05-19 20:42 |  | 8.11d |  |  | 60h |
| 176 | 1.3.2.3.1 | 楼栋管理 |  | 1d? | 2016-05-04 17:06 | 2016-05-05 17:06 | 119 | 19.41d | 0d | 洪涛 | 12h |
| 177 | 1.3.2.3.2 | 房源管理 |  | 1d? | 2016-05-05 17:06 | 2016-05-06 17:06 | 176 | 19.41d | 0d | 洪涛 | 12h |
| 178 | 1.3.2.3.3 | 户型管理 |  | 1d? | 2016-05-06 17:06 | 2016-05-07 17:06 | 177 | 19.41d | 0d | 洪涛 | 12h |
| 179 | 1.3.2.3.4 | 房价公示管理 |  | 1d? | 2016-05-17 20:42 | 2016-05-18 20:42 | 174 | 6.11d | 0d | 张军 | 12h |
| 180 | 1.3.2.3.5 | 回购管理 |  | 1d | 2016-05-18 20:42 | 2016-05-19 20:42 | 179 | 6.11d | 0d | 张军 | 12h |

Notes:
- 180: 查询管理前台回购申请

| ID | WBS | Task | Duration | Start | Finish | Predecessors | Total slack | Free slack | Constraint | Resources | Work |
| --- | --- | --- | --- | --- | --- | --- | --- | --- | --- | --- | --- |
| 181 | 1.3.2.4 | **推广管理** | 1d? | 2016-05-20 13:30 | 2016-05-21 12:00 |  | 8.71d |  |  |  | 12h |
| 182 | 1.3.2.4.1 | **链接管理** | 0.5d? | 2016-05-20 13:30 | 2016-05-20 19:30 |  | 8.71d |  |  |  | 6h |
| 183 | 1.3.2.4.1.1 | banner管理 | 0.5d? | 2016-05-20 13:30 | 2016-05-20 19:30 | 172 | 8.71d | 0d |  | 郭正 | 6h |
| 184 | 1.3.2.4.2 | 文案管理 | 0.5d? | 2016-05-20 19:30 | 2016-05-21 12:00 | 183 | 8.71d |  |  | 郭正 | 6h |
| 185 | 1.3.2.5 | **资金管理** | 15.3d? | 2016-05-07 17:06 | 2016-05-24 20:42 |  | 6.11d |  |  |  | 72h |
| 186 | 1.3.2.5.1 | **积分管理** | 4d? | 2016-05-19 20:42 | 2016-05-24 20:42 |  | 6.11d |  |  |  | 48h |
| 187 | 1.3.2.5.1.1 | 积分查询 | 1d? | 2016-05-19 20:42 | 2016-05-20 20:42 | 180 | 6.11d | 0d |  | 张军 | 12h |
| 188 | 1.3.2.5.1.2 | **积分分配** | 3d? | 2016-05-20 20:42 | 2016-05-24 20:42 |  | 6.11d |  |  |  | 36h |
| 189 | 1.3.2.5.1.2.1 | 页面 | 1d? | 2016-05-20 20:42 | 2016-05-21 20:42 | 187 | 6.11d | 0d |  | 张军 | 12h |
| 190 | 1.3.2.5.1.2.2 | **后台接口** | 2d? | 2016-05-21 20:42 | 2016-05-24 20:42 |  | 6.11d |  |  |  | 24h |
| 191 | 1.3.2.5.1.2.2.1 | 会员晋升 | 1d | 2016-05-21 20:42 | 2016-05-23 20:42 | 189 | 6.11d | 0d |  | 张军 | 12h |
| 192 | 1.3.2.5.1.2.2.2 | 积分分配 | 1d? | 2016-05-23 20:42 | 2016-05-24 20:42 | 191 | 6.11d |  |  | 张军 | 12h |
| 193 | 1.3.2.5.2 | **资金统计** | 2d | 2016-05-07 17:06 | 2016-05-10 17:06 |  | 19.41d |  |  |  | 24h |
| 194 | 1.3.2.5.2.1 | 用户资金流水统计 | 0.5d | 2016-05-07 17:06 | 2016-05-09 09:36 | 178 | 19.41d | 0d |  | 洪涛 | 6h |
| 195 | 1.3.2.5.2.2 | 平台资金流水 | 0.5d | 2016-05-09 09:36 | 2016-05-09 17:06 | 194 | 19.41d | 0d |  | 洪涛 | 6h |
| 196 | 1.3.2.5.2.3 | 平台账户资金统计 | 0.5d | 2016-05-09 17:06 | 2016-05-10 09:36 | 195 | 19.41d | 0d |  | 洪涛 | 6h |
| 197 | 1.3.2.5.2.4 | 用户资金统计 | 0.5d | 2016-05-10 09:36 | 2016-05-10 17:06 | 196 | 19.41d |  |  | 洪涛 | 6h |
| 198 | 1.4 | 测试 | 14d | 2016-05-15 22:00 | 2016-05-30 22:00 |  | 0d |  | finish no earlier than 2016-05-30 22:00 |  |  |
| 199 | 1.5 | 投产 | 2d | 2016-05-28 22:00 | 2016-05-30 22:00 |  | 0d |  | finish no earlier than 2016-05-30 22:00 |  |  |
